How a schedule from OmniPlan changed from version to version. A marks actual dates.

## Version 1 (saved 2014-04-18)

Note of the change: Updated SVT DAQ and dependencies.

| ID | WBS | Task | Start | Predecessors | Constraint |
| --- | --- | --- | --- | --- | --- |
| 1 | 1 | **SVT** | 2013-01-07 |  | start no earlier than 2013-01-07 |
| 2 | 1.1 | **Milestones** | 2013-02-01 |  |  |
| 3 |  | SVT returns from JLab | 2013-02-01 |  | start no earlier than 2013-02-01 |
| 4 |  | Project funded | 2013-10-01 |  | start no earlier than 2013-10-01 |
| 5 | 1.2 | **Layers 1-3** | 2013-01-07 |  |  |
| 6 | 1.2.1 | **Modules** | 2013-01-07 |  |  |
| 7 | 1.2.1.1 | **Half modules** | 2013-02-01 |  |  |
| 8 |  | Disassembly | 2013-02-01 | 3 |  |
| 9 |  | Testing | 2013-02-08 | 8 |  |
| 10 |  | Layers 1-3 Half Modules Complete | 2013-05-03 | 9 |  |
| 11 | 1.2.1.2 | **Module supports** | 2013-01-07 |  |  |
| 12 |  | Prototyping | 2013-01-07 |  |  |
| 13 |  | Design | 2013-04-01 | 12 |  |
| 14 |  | Procurement | 2013-10-01 | 13, 4 |  |
| 15 |  | Fabrication | 2013-10-29 | 14 |  |
| 16 |  | Assembly | 2013-11-12 | 15 |  |
| 17 |  | Testing | 2013-11-26 | 16 |  |
| 18 | 1.2.1.3 | **Integration** | 2013-04-29 |  |  |
| 19 | 1.2.1.3.1 | **Design** | 2013-04-29 | 13 |  |
| 20 |  | Module | 2013-04-29 |  |  |
| 21 |  | Assembly fixture | 2013-04-29 | 20FF |  |
| 22 | 1.2.1.3.2 | **Procurement** | 2013-10-01 | 4 |  |
| 23 |  | Module assembly fixture | 2013-10-01 | 21 |  |
| 24 | 1.2.1.3.3 | **Fabrication** | 2013-10-29 |  |  |
| 25 |  | Module assembly fixture | 2013-10-29 | 23 |  |
| 26 | 1.2.1.3.4 | **Assembly** | 2013-12-10 | 11, 10 |  |
| 27 |  | Half module preparation | 2013-12-10 |  |  |
| 28 |  | Module assembly | 2013-12-24 | 27 |  |
| 29 | 1.2.1.3.5 | **Testing** | 2014-01-07 |  |  |
| 30 |  | DAQ testing | 2014-01-07 | 28 |  |
| 31 |  | Survey | 2014-01-21 | 30FF |  |
| 32 |  | Layers 1-3 modules complete | 2014-02-04 | 29 |  |
| 33 | 1.2.2 | **Support Plates** | 2013-05-27 |  |  |
| 34 | 1.2.2.1 | **Design** | 2013-05-27 |  |  |
| 35 |  | Support plate | 2013-05-27 | 20 |  |
| 36 | 1.2.2.2 | **Procurement** | 2013-10-01 | 34, 4 |  |
| 37 |  | Support plate | 2013-10-01 |  |  |
| 38 | 1.2.2.3 | **Fabrication** | 2013-10-29 | 36 |  |
| 39 |  | Small parts | 2013-10-29 |  |  |
| 40 | 1.2.2.4 | **Assembly** | 2014-02-04 | 38, 32 |  |
| 41 |  | Module mounting | 2014-02-04 |  |  |
| 42 | 1.2.2.5 | **Testing** | 2014-02-04 | 40SS |  |
| 43 |  | DAQ testing | 2014-02-04 |  |  |
| 44 |  | Survey | 2014-02-04 |  |  |
| 45 |  | Layers 1-3 Support plates complete | 2014-03-18 | 42 |  |
| 46 | 1.2.3 | **Integration** | 2013-08-19 |  |  |
| 47 | 1.2.3.1 | **Design** | 2013-08-19 |  |  |
| 48 |  | Layers 1-3 design | 2013-08-19 | 35 |  |
| 49 | 1.2.3.2 | **Procurement** | 2013-11-11 | 4 |  |
| 50 |  | Hardware | 2013-11-11 | 48 |  |
| 51 | 1.2.3.3 | **Fabrication** | 2013-12-09 |  |  |
| 52 |  | Small parts | 2013-12-09 | 50 |  |
| 53 | 1.2.3.4 | **Assembly** | 2014-03-18 | 45 |  |
| 54 |  | Layer 1-3 assembly | 2014-03-18 | 51, 226, 231 |  |
| 55 | 1.2.3.5 | **Testing** | 2014-04-01 |  |  |
| 56 |  | Survey | 2014-04-01 | 54 |  |
| 57 |  | Layers 1-3 complete | 2014-04-15 | 56 |  |
| 58 | 1.3 | **Layers 4-6** | 2013-04-29 | 13 |  |
| 59 | 1.3.1 | **Modules** | 2013-04-29 |  |  |
| 60 | 1.3.1.1 | **Half Modules** | 2013-04-29 |  |  |
| 61 | 1.3.1.1.1 | **Supports** | 2013-04-29 |  |  |
| 62 | 1.3.1.1.1.1 | **Design** | 2013-04-29 |  |  |
| 63 |  | Carbon Fiber | 2013-04-29 |  |  |
| 64 |  | Kapton | 2013-04-29 | 63FF |  |
| 65 | 1.3.1.1.1.2 | **Procurement** | 2013-10-01 | 62, 4 |  |
| 66 |  | Carbon fiber | 2013-10-01 |  |  |
| 67 |  | Kapton | 2013-10-01 | 66FF |  |
| 68 |  | Fabrication | 2013-10-29 | 65 |  |
| 69 |  | Assembly | 2013-11-12 | 68 |  |
| 70 |  | Testing | 2013-12-10 | 69 |  |

| ID | WBS | Task | Start | Predecessors | Constraint |
| --- | --- | --- | --- | --- | --- |
| 71 | 1.3.1.1.2 | **Sensors** | 2013-04-29 |  |  |
| 72 |  | Procurement | 2013-04-29 |  |  |
| 73 |  | Testing | 2013-05-27 | 72 |  |
| 74 | 1.3.1.1.3 | **Integration** | 2013-08-05 |  |  |
| 75 | 1.3.1.1.3.1 | **Design** | 2013-08-05 |  |  |
| 76 |  | Half-module design | 2013-08-05 | 190FF, 64FF |  |
| 77 |  | Support assembly fixture | 2013-09-30 | 76 |  |
| 78 |  | Half-module assembly fixture | 2013-09-30 | 76 |  |
| 79 |  | Wirebonding fixture | 2013-09-30 | 76 |  |
| 80 | 1.3.1.1.3.2 | **Procurement** | 2013-10-14 |  |  |
| 81 |  | Support assembly fixture | 2013-10-14 | 77 |  |
| 82 |  | Half-module assembly fixture | 2013-10-28 | 78 |  |
| 83 |  | Wirebonding fixture | 2013-10-28 | 79 |  |
| 84 | 1.3.1.1.3.3 | **Fabrication** | 2013-11-25 |  |  |
| 85 |  | Small parts | 2013-11-25 | 80 |  |
| 86 | 1.3.1.1.3.4 | **Assembly** | 2013-12-09 | 194SS, 4 |  |
| 87 |  | half-module assembly | 2013-12-09 | 84 |  |
| 88 |  | wirebonding | 2013-12-09 | 87SS |  |
| 89 | 1.3.1.1.3.5 | **Testing** | 2013-12-09 |  |  |
| 90 |  | DAQ testing | 2013-12-09 | 88SS |  |
| 91 |  | Layers 4-6 Half Modules Complete | 2014-01-18 | 89 |  |
| 92 | 1.3.1.2 | **Module supports** | 2013-08-26 |  |  |
| 93 |  | Design | 2013-08-26 |  | start no earlier than 2013-08-26 |
| 94 |  | Procurement | 2013-10-21 | 93, 4 |  |
| 95 |  | Fabrication | 2013-11-18 | 94 |  |
| 96 |  | Assembly | 2013-12-02 | 95 |  |
| 97 |  | Testing | 2013-12-16 | 96 |  |
| 98 | 1.3.1.3 | **Integration** | 2013-10-21 |  |  |
| 99 | 1.3.1.3.1 | **Design** | 2013-10-21 |  |  |
| 100 |  | Module | 2013-10-21 | 93, 76FF |  |
| 101 |  | Module assembly fixture | 2013-12-02 | 100FF |  |
| 102 | 1.3.1.3.2 | **Procurement** | 2013-12-16 | 4 |  |
| 103 |  | Module assembly fixture | 2013-12-16 | 101 |  |
| 104 | 1.3.1.3.3 | **Fabrication** | 2014-01-13 |  |  |
| 105 |  | Module assembly fixture | 2014-01-13 | 103 |  |
| 106 | 1.3.1.3.4 | **Assembly** | 2014-01-20 |  |  |
| 107 |  | Modules | 2014-01-20 | 91, 105 |  |
| 108 | 1.3.1.3.5 | **Testing** | 2014-01-20 | 106SS |  |
| 109 |  | DAQ testing | 2014-01-20 |  |  |
| 110 |  | Survey | 2014-02-17 | 109 |  |
| 111 |  | Layers 4-6 Modules Complete | 2014-03-01 | 110 |  |
| 112 | 1.3.2 | **Support Plates** | 2013-10-25 | 33SS |  |
| 113 | 1.3.2.1 | **Design** | 2013-10-25 |  |  |
| 114 |  | Support plate | 2013-10-25 | 100FF | start no earlier than 2013-10-25 |
| 115 | 1.3.2.2 | **Procurement** | 2014-01-17 | 113, 4 |  |
| 116 |  | Support plate | 2014-01-17 |  |  |
| 117 | 1.3.2.3 | **Fabrication** | 2014-02-14 | 115 |  |
| 118 |  | Small parts | 2014-02-14 |  |  |
| 119 | 1.3.2.4 | **Assembly** | 2014-03-03 | 117 |  |
| 120 |  | Module mounting | 2014-03-03 | 111 |  |
| 121 | 1.3.2.5 | **Testing** | 2014-03-17 | 119 |  |
| 122 |  | DAQ testing | 2014-03-17 |  |  |
| 123 |  | Survey | 2014-03-17 |  |  |
| 124 |  | Layers 4-6 support plates complete | 2014-04-26 | 121 |  |
| 125 | 1.3.3 | **Integration** | 2013-10-25 |  |  |
| 126 | 1.3.3.1 | **Design** | 2013-10-25 |  |  |
| 127 |  | Layers 4-6 Design | 2013-10-25 | 114FF |  |
| 128 | 1.3.3.2 | **Procurement** | 2014-01-17 | 4 |  |
| 129 |  | Hardware | 2014-01-17 | 127 |  |
| 130 | 1.3.3.3 | **Fabrication** | 2014-01-17 |  |  |
| 131 |  | Small parts | 2014-01-17 | 127 |  |
| 132 | 1.3.3.4 | **Assembly** | 2014-04-28 | 124 |  |
| 133 |  | Layer 4-6 assembly | 2014-04-28 | 131, 129, 236, 241 |  |
| 134 | 1.3.3.5 | **Testing** | 2014-05-12 |  |  |
| 135 |  | Survey | 2014-05-12 | 133 |  |
| 136 |  | Layers 4-6 complete | 2014-05-24 | 135 |  |
| 137 | 1.4 | **Tracker support** | 2013-10-01 | 4 |  |
| 138 | 1.4.1 | **C support** | 2013-10-01 |  |  |
| 139 |  | Design | 2013-10-01 | 48FF |  |
| 140 |  | Procurement | 2013-11-26 | 139, 4 |  |

| ID | WBS | Task | Start | Predecessors | Constraint |
| --- | --- | --- | --- | --- | --- |
| 141 |  | Fabrication | 2013-12-24 | 140 |  |
| 142 |  | Assembly | 2014-01-21 | 141 |  |
| 143 |  | Testing | 2014-02-04 | 142 |  |
| 144 | 1.4.2 | **DAQ Support/Cooling** | 2014-01-17 |  |  |
| 145 |  | Design | 2014-01-17 | 151FF |  |
| 146 |  | Procurement | 2014-03-14 | 145, 4 |  |
| 147 |  | Fabrication | 2014-03-28 | 146 |  |
| 148 |  | Assembly | 2014-04-25 | 147 |  |
| 149 |  | Testing | 2014-05-09 | 148 |  |
| 150 | 1.4.3 | **Baseplate** | 2014-01-17 |  |  |
| 151 |  | Design | 2014-01-17 | 48, 127 |  |
| 152 |  | Procurement | 2014-03-14 | 151 |  |
| 153 |  | Fabrication | 2014-03-28 | 152 |  |
| 154 |  | Assembly | 2014-04-25 | 153 |  |
| 155 |  | Testing | 2014-05-09 | 154 |  |
| 156 |  | Integration | 2014-05-23 | 155 |  |
| 157 |  | Testing | 2014-06-06 | 156 |  |
| 158 |  | Tracker Support Complete | 2014-06-20 | 157 |  |
| 159 | 1.5 | **Services** | 2013-10-28 | 4 |  |
| 160 | 1.5.1 | **Motion Levers** | 2013-10-28 |  |  |
| 161 |  | Design | 2013-10-28 | 48FF |  |
| 162 |  | Procurement | 2013-11-11 | 161, 4 |  |
| 163 |  | Fabrication | 2013-11-25 | 162 |  |
| 164 |  | Assembly | 2013-12-09 | 163 |  |
| 165 |  | Testing | 2013-12-23 | 164 |  |
| 166 | 1.5.2 | **Vacuum Flanges/Boards/cables** | 2014-01-01 |  |  |
| 167 |  | Design | 2014-01-01 |  | start no earlier than 2014-01-01 |
| 168 |  | Procurement | 2014-03-14 | 167, 4 |  |
| 169 |  | Fabrication | 2014-04-07 | 168 | start no earlier than 2014-04-07 |
| 170 |  | Assembly | 2014-05-13 | 169, 215, 223 |  |
| 171 |  | Testing | 2014-05-27 | 170 |  |
| 172 | 1.5.3 | **Shipping** | 2014-04-21 |  |  |
| 173 |  | Design | 2014-04-21 |  | start no earlier than 2014-04-21 |
| 174 |  | Procurement | 2014-05-12 | 173 |  |
| 175 |  | Fabrication | 2014-06-09 | 174 |  |
| 176 |  | Assembly | 2014-06-30 | 175 |  |
| 177 |  | Testing | 2014-07-14 | 176 |  |
| 178 |  | Services complete | 2014-07-19 | 165, 171, 177 |  |
| 179 | 1.6 | **Integration at SLAC** | 2014-06-20 | 5 |  |
| 180 |  | Assembly | 2014-06-20 | 58, 160, 166, 137, 225 |  |
| 181 |  | Testing | 2014-07-04 | 180 |  |
| 182 |  | SVT ready to ship | 2014-08-27 | 181, 172, 178, 296 |  |
| 183 | 1.7 | **Integration at JLab** | 2014-08-27 | 182 |  |
| 184 |  | Assembly | 2014-08-27 |  |  |
| 185 |  | Testing | 2014-09-10 | 184 |  |
| 186 |  | Installation | 2014-10-08 | 185 |  |
| 187 |  | SVT project complete | 2014-10-15 | 186 |  |
| 188 | 2 | **SVT DAQ** | 2013-08-05 |  |  |
| 189 | 2.1 | **Hybrids** | 2013-08-05 |  |  |
| 190 |  | Design | 2013-08-05 |  | start no earlier than 2013-08-05 |
| 191 |  | Procurement | 2013-09-30 | 190 |  |
| 192 |  | Fabrication | 2013-10-14 | 191 |  |
| 193 |  | Assembly | 2013-10-28 | 192 |  |
| 194 |  | Testing | 2013-11-25 | 193 |  |
| 195 |  | Hybrids Complete | 2013-12-21 | 194 |  |
| 196 | 2.2 | **FE Boards** | 2013-12-02 |  | start no earlier than 2013-12-02 |
| 197 |  | Design | 2013-12-02 |  |  |
| 198 |  | Procurement | 2014-01-24 | 197 | start no earlier than 2014-01-24 |
| 199 |  | Assembly | 2014-01-31 | 198 |  |
| 200 |  | Firmware | 2013-12-27 |  | start no earlier than 2013-12-27 |
| 201 |  | Testing | 2014-02-07 | 199, 212SS, 200 |  |
| 202 |  | FE Board Functionality Complete | 2014-05-01 | 201 | start no earlier than 2014-04-17 |
| 203 |  | Layout 2nd spin | 2014-05-01 | 202 | start no earlier than 2014-04-17 |
| 204 |  | Procurement 2nd spin | 2014-05-08 | 203 | start no earlier than 2014-04-17 |
| 205 |  | Assembly | 2014-05-15 | 204 | start no earlier than 2014-04-17 |
| 206 |  | Production Testing | 2014-05-22 | 205 | start no earlier than 2014-04-17 |
| 207 |  | FE Boards Complete | 2014-05-29 | 206 |  |
| 208 | 2.3 | **Flange Boards** | 2013-11-25 |  | start no earlier than 2013-11-25 |
| 209 |  | Design | 2013-11-25 |  |  |
| 210 |  | Procurement | 2014-01-14 | 209 | start no earlier than 2014-01-14 |

| ID | WBS | Task | Start | Predecessors | Complete | Constraint |
| --- | --- | --- | --- | --- | --- | --- |
| 211 |  | Assembly | 2014-01-21 | 210 |  |  |
| 212 |  | Testing | 2014-01-28 | 259FF, 211 |  |  |
| 213 |  | Flange Boards Functionality Complete | 2014-04-26 | 259, 212 |  | start no earlier than 2014-04-17 |
| 214 |  | Procurement Production | 2014-04-28 | 213 |  | start no earlier than 2014-04-17 |
| 215 |  | Production Testing | 2014-05-05 | 214 |  | start no earlier than 2014-04-17 |
| 216 |  | Flange Boards Complete | 2014-05-10 | 215 |  |  |
| 217 | 2.4 | **Power Flange Boards** | 2014-03-10 |  |  | start no earlier than 2013-11-25 |
| 218 |  | Design | 2014-03-10 |  |  | start no earlier than 2014-03-09 |
| 219 |  | Schematic | 2014-03-24 | 218 |  |  |
| 220 |  | Layout | 2014-03-26 | 219 |  |  |
| 221 |  | Procurement | 2014-04-28 | 220 |  | start no earlier than 2014-01-14 |
| 222 |  | Assembly | 2014-05-05 | 221 |  |  |
| 223 |  | Testing | 2014-05-12 | 222 |  |  |
| 224 |  | Power Flange Boards Complete | 2014-05-13 | 223 |  |  |
| 225 | 2.5 | **Cables** | 2014-02-03 |  |  | start no earlier than 2014-02-03 |
| 226 | 2.5.1 | **L1-L3 Aggregators** | 2014-02-03 |  |  |  |
| 227 |  | Design | 2014-02-03 | 35 |  |  |
| 228 |  | Procurement | 2014-02-24 | 227 |  |  |
| 229 |  | Assembly | 2014-03-03 | 228 |  |  |
| 230 |  | Testing | 2014-03-10 | 229 |  |  |
| 231 | 2.5.2 | **L1-L3 FEB Cables** | 2014-02-03 |  |  |  |
| 232 |  | Design | 2014-02-03 | 35 |  |  |
| 233 |  | Procurement | 2014-02-24 | 232 |  |  |
| 234 |  | Assembly | 2014-03-03 | 233 |  |  |
| 235 |  | Testing | 2014-03-10 | 234 |  |  |
| 236 | 2.5.3 | **L4-L6 Aggregators** | 2014-02-03 |  |  |  |
| 237 |  | Design | 2014-02-03 | 114 |  |  |
| 238 |  | Procurement | 2014-02-24 | 237 |  |  |
| 239 |  | Assembly | 2014-03-03 | 238 |  |  |
| 240 |  | Testing | 2014-03-10 | 239 |  |  |
| 241 | 2.5.4 | **L4-L6 FEB Cables** | 2014-02-03 |  |  |  |
| 242 |  | Design | 2014-02-03 | 114 |  |  |
| 243 |  | Procurement | 2014-02-24 | 242 |  |  |
| 244 |  | Assembly | 2014-03-03 | 243 |  |  |
| 245 |  | Testing | 2014-03-10 | 244 |  |  |
| 246 | 2.5.5 | **FEB HV Cables** | 2014-02-03 |  |  |  |
| 247 |  | Design | 2014-02-03 |  |  |  |
| 248 |  | Procurement | 2014-02-24 | 247 |  |  |
| 249 |  | Assembly | 2014-04-28 | 248 |  | start no earlier than 2014-04-28 |
| 250 |  | Testing | 2014-05-12 | 249 |  |  |
| 251 | 2.5.6 | **FEB LV Cables** | 2014-02-03 |  |  |  |
| 252 |  | Design | 2014-02-03 |  |  |  |
| 253 |  | Procurement | 2014-02-24 | 252 |  |  |
| 254 |  | Assembly | 2014-04-28 | 253 |  | start no earlier than 2014-04-28 |
| 255 |  | Testing | 2014-05-12 | 254 |  |  |
| 256 | 2.5.7 | **FEB Data Cables** | 2014-02-03 |  |  |  |
| 257 |  | Design | 2014-02-03 |  |  |  |
| 258 |  | Procurement | 2014-02-10 | 257 |  |  |
| 259 |  | Testing | 2014-02-19 | 258 |  | start no earlier than 2014-02-19 |
| 260 |  | Production Procurement | 2014-04-28 | 259 |  | start no earlier than 2014-04-17 |
| 261 |  | Production Testing | 2014-05-12 | 260 |  | start no earlier than 2014-04-17 |
| 262 | 2.5.8 | **External PS Cables** | 2014-02-03 |  |  |  |
| 263 |  | Design | 2014-02-03 |  |  |  |
| 264 |  | Procurement | 2014-02-03 | 263SS | 100% |  |
| 265 |  | Assembly | 2014-04-24 | 263SS, 264SS, 264FF |  | start no earlier than 2014-04-24 |
| 266 |  | Testing | 2014-05-19 | 265 |  |  |
| 267 | 2.5.9 | **External DAQ Cables** | 2014-04-21 |  |  |  |
| 268 |  | Design | 2014-04-21 |  |  | start no earlier than 2014-04-21 |
| 269 |  | Procurement | 2014-04-22 | 268 |  |  |
| 270 |  | Assembly | 2014-05-20 | 269 |  |  |
| 271 |  | Testing | 2014-05-21 | 270 |  |  |
| 272 |  | Cables Complete | 2014-05-22 | 226, 231, 236, 241, 246, 251, 256, 262, 267 |  |  |
| 273 | 2.6 | **ATCA DAQ** | 2014-01-06 |  |  | start no earlier than 2014-01-06 |
| 274 | 2.6.1 | **RCE Nodes** | 2014-04-04 |  |  |  |
| 275 |  | Procurement | 2014-04-04 |  |  | start no earlier than 2014-04-04 |
| 276 |  | DTM Firmware | 2014-05-02 | 275 |  |  |
| 277 |  | DPM Firmware | 2014-05-16 | 276 |  |  |
| 278 |  | Software | 2014-05-30 | 277 |  |  |
| 279 |  | ROC Software | 2014-06-13 | 278 |  |  |
| 280 |  | Testing | 2014-06-27 | 279 |  |  |

| ID | WBS | Task | Start | Predecessors | Constraint |
| --- | --- | --- | --- | --- | --- |
| 281 | 2.6.2 | **Trigger RTM** | 2014-01-06 |  |  |
| 282 |  | Design | 2014-01-06 |  |  |
| 283 |  | Procurement | 2014-04-14 | 282 |  |
| 284 |  | Assembly | 2014-05-05 | 283 |  |
| 285 |  | Testing | 2014-05-12 | 284 |  |
| 286 |  | RCE DAQ Complete | 2014-07-11 | 280, 285 |  |
| 287 | 2.7 | **Power Supplies** | 2013-11-22 |  | start no earlier than 2013-11-22 |
| 288 |  | Procurement | 2013-11-22 |  | start no earlier than 2013-11-22 |
| 289 |  | EPICS IOC software | 2014-04-21 |  | start no earlier than 2014-04-21 |
| 290 |  | Temporary Hardware Setup | 2014-05-21 | 262 | start no earlier than 2014-05-05 |
| 291 |  | EPICS GUI testing | 2014-05-28 | 290, 289 | start no earlier than 2014-04-17 |
| 292 |  | Testing | 2014-06-25 | 288, 291, 289 | start no earlier than 2014-02-14 |
| 293 | 2.8 | **Integration** | 2014-07-09 |  |  |
| 294 |  | Assembly | 2014-07-09 | 5, 58, 166, 144, 225, 292 |  |
| 295 |  | Testing | 2014-07-23 | 273, 294 |  |
| 296 |  | SVT DAQ Complete | 2014-08-27 | 295 |  |

## Version 2 (saved 2014-04-18)

Note of the change: Implemented SVT DAQ based on meeting comments.

Removed: 290 Temporary Hardware Setup

Changed:

| ID | Task | Start | Predecessors | Other |
| --- | --- | --- | --- | --- |
| 170 | Assembly | 2014-05-13 → 2014-05-20 (+7d) |  |  |
| 171 | Testing | 2014-05-27 → 2014-06-03 (+7d) |  |  |
| 182 | SVT ready to ship | 2014-08-27 → 2014-09-03 (+7d) |  |  |
| 183 | **Integration at JLab** | 2014-08-27 → 2014-09-03 (+7d) |  |  |
| 184 | Assembly | 2014-08-27 → 2014-09-03 (+7d) |  |  |
| 185 | Testing | 2014-09-10 → 2014-09-17 (+7d) |  |  |
| 186 | Installation | 2014-10-08 → 2014-10-15 (+7d) |  |  |
| 187 | SVT project complete | 2014-10-15 → 2014-10-22 (+7d) |  |  |
| 202 | FE Board Functionality Complete | 2014-05-01 → 2014-05-31 (+30d) |  |  |
| 203 | Layout 2nd spin | 2014-05-01 → 2014-06-02 (+32d) |  |  |
| 204 | Procurement 2nd spin | 2014-05-08 → 2014-06-16 (+39d) |  |  |
| 205 | Assembly | 2014-05-15 → 2014-06-25 (+41d) |  |  |
| 206 | Production Testing | 2014-05-22 → 2014-07-07 (+46d) |  |  |
| 207 | FE Boards Complete | 2014-05-29 → 2014-07-12 (+44d) |  |  |
| 213 | Flange Boards Functionality Complete | 2014-04-26 → 2014-05-03 (+7d) |  |  |
| 214 | Procurement Production | 2014-04-28 → 2014-05-05 (+7d) |  |  |
| 215 | Production Testing | 2014-05-05 → 2014-05-12 (+7d) |  |  |
| 216 | Flange Boards Complete | 2014-05-10 → 2014-05-17 (+7d) |  |  |
| 221 | Procurement | 2014-04-28 → 2014-05-05 (+7d) |  |  |
| 222 | Assembly | 2014-05-05 → 2014-05-12 (+7d) |  |  |
| 223 | Testing | 2014-05-12 → 2014-05-19 (+7d) |  |  |
| 224 | Power Flange Boards Complete | 2014-05-13 → 2014-05-20 (+7d) |  |  |
| 254 | Assembly | 2014-04-28 → 2014-05-05 (+7d) |  | constraint start no earlier than 2014-04-28 → none |
| 255 | Testing | 2014-05-12 → 2014-05-19 (+7d) |  |  |
| 259 | Testing | 2014-02-19 → 2014-02-17 (-2d) |  | constraint start no earlier than 2014-02-19 → none |
| 260 | Production Procurement | 2014-04-28 → 2014-04-21 (-7d) |  | constraint start no earlier than 2014-04-17 → none |
| 261 | Production Testing | 2014-05-12 → 2014-04-28 (-14d) |  | constraint start no earlier than 2014-04-17 → none |
| 265 | Assembly | 2014-04-24 → 2014-04-28 (+4d) | 263SS, 264SS, 264FF → 263, 264SS, 264FF |  |
| 266 | Testing | 2014-05-19 → 2014-05-21 (+2d) |  |  |
| 272 | Cables Complete | 2014-05-22 → 2014-05-24 (+2d) |  |  |
| 276 | DPM Firmware | 2014-05-16 → 2014-05-02 (-14d) | 278 → 275 |  |
| 277 | Software | 2014-05-30 → 2014-05-16 (-14d) |  |  |
| 278 | DTM Firmware | 2014-05-02 → 2014-05-30 (+28d) | 275 → 277 |  |
| 279 | ROC Software |  | 277 → 278 |  |
| 289 | EPICS IOC software | 2014-04-21 → 2014-05-05 (+14d) |  | constraint start no earlier than 2014-04-21 → start no earlier than 2014-05-05 |
| 290 | Testing |  | 288, 293, 289 → 288, 289 |  |
| 293 | EPICS GUI testing | 2014-05-28 → 2014-07-23 (+56d) | Temporary Hardware Setup, 289 → 292 |  |
| 294 | Testing | 2014-07-23 → 2014-07-30 (+7d) | 273, 292 → 273, 292, 293 |  |
| 295 | SVT DAQ Complete | 2014-08-27 → 2014-09-03 (+7d) |  |  |

## Version 3 (saved 2014-04-21)

Note of the change: Adding Tim's new end game SVT part including his file as backup.

Added:

| ID | Task | Start | Predecessors | Constraint |
| --- | --- | --- | --- | --- |
| 10 | QA and selection | 2014-05-26 | 9 | start no earlier than 2014-04-15 |
| 33 | **Support channels** | 2014-04-21 |  |  |
| 35 | Support channel | 2014-04-21 | 20 |  |
| 37 | Support channel | 2014-05-05 |  |  |
| 100 | **Support channels** | 2014-04-28 | 33SS |  |
| 102 | Support channel | 2014-04-28 | 88 |  |
| 104 | Support channel | 2014-05-12 |  |  |
| 113 | **Tracker support structures** | 2014-05-12 | 4 |  |
| 114 | **Support Box** | 2014-05-12 |  |  |
| 118 | **Support ring** | 2014-05-12 |  |  |

Removed: 33 Support Plates; 35 Support plate; 37 Support plate; 45 Layers 1-3 Support plates complete; 48 Layers 1-3 design; 50 Hardware; 54 Layer 1-3 assembly; 98 Integration; 112 Support Plates; 113 Design; 114 Support plate; 115 Procurement; 116 Support plate; 117 Fabrication; 118 Small parts; 119 Assembly; 121 Testing; 123 Survey; 124 Layers 4-6 support plates complete; 125 Integration; 126 Design; 127 Layers 4-6 Design; 128 Procurement; 129 Hardware; 130 Fabrication; 131 Small parts; 132 Assembly; 133 Layer 4-6 assembly; 134 Testing; 135 Survey; 137 Tracker support; 138 C support; 150 Baseplate; 156 Integration; 160 Motion Levers; 165 Testing; 171 Testing; 173 Design; 174 Procurement; 175 Fabrication; 176 Assembly; 177 Testing; 180 Assembly; 181 Testing; 184 Assembly; 185 Testing

Changed:

| ID | Task | Start | Predecessors | Other |
| --- | --- | --- | --- | --- |
| 7 | **Half modules** | 2013-02-01 → 2014-05-05 (+458d) |  |  |
| 8 | Disassembly | 2013-02-01 → 2014-05-05 (+458d) |  | constraint none → start no earlier than 2014-05-05 |
| 9 | Testing | 2013-02-08 → 2014-05-12 (+458d) |  |  |
| 11 | Layers 1-3 Half Modules Complete | 2013-05-03 → 2014-06-02 (+395d) | 9 → 10 |  |
| 14 | Design | 2013-04-01 → 2014-04-14 (+378d) |  | constraint none → start no earlier than 2014-04-14 |
| 15 | Procurement | 2013-10-01 → 2014-04-21 (+202d) |  | constraint none → start no earlier than 2014-04-21 |
| 16 | Fabrication | 2013-10-29 → 2014-04-28 (+181d) |  |  |
| 17 | Assembly | 2013-11-12 → 2014-05-12 (+181d) |  |  |
| 18 | **Integration** | 2013-04-29 → 2014-03-24 (+329d) |  |  |
| 19 | **Design** | 2013-04-29 → 2014-03-24 (+329d) | 14 → none |  |
| 20 | Module | 2013-04-29 → 2014-03-24 (+329d) | none → 14FF |  |
| 21 | Assembly fixture | 2013-04-29 → 2014-04-21 (+357d) | 20FF → 14 |  |
| 22 | **Procurement** | 2013-10-01 → 2014-05-05 (+216d) |  |  |
| 23 | Module assembly fixture | 2013-10-01 → 2014-05-05 (+216d) |  |  |
| 24 | **Fabrication** | 2013-10-29 → 2014-05-12 (+195d) |  |  |
| 25 | Module assembly fixture | 2013-10-29 → 2014-05-12 (+195d) |  |  |
| 26 | **Assembly** | 2013-12-10 → 2014-06-02 (+174d) |  |  |
| 27 | Half module preparation | 2013-12-10 → 2014-06-02 (+174d) |  |  |
| 28 | Module assembly | 2013-12-24 → 2014-06-09 (+167d) |  |  |
| 29 | **Testing** | 2014-01-07 → 2014-06-23 (+167d) |  |  |
| 30 | DAQ testing | 2014-01-07 → 2014-06-23 (+167d) |  |  |
| 31 | Survey | 2014-01-21 → 2014-06-23 (+153d) |  |  |
| 32 | Layers 1-3 modules complete | 2014-02-04 → 2014-07-07 (+153d) |  |  |
| 34 | **Design** | 2013-05-27 → 2014-04-21 (+329d) |  |  |
| 36 | **Procurement** | 2013-10-01 → 2014-05-05 (+216d) |  |  |
| 38 | **Fabrication** | 2013-10-29 → 2014-06-02 (+216d) |  |  |
| 39 | Small parts | 2013-10-29 → 2014-06-02 (+216d) |  |  |
| 40 | **Assembly** | 2014-02-04 → 2014-07-07 (+153d) |  |  |
| 41 | Module mounting | 2014-02-04 → 2014-07-07 (+153d) |  |  |
| 42 | **Testing** | 2014-02-04 → 2014-07-07 (+153d) |  |  |
| 43 | DAQ testing | 2014-02-04 → 2014-07-07 (+153d) |  |  |
| 44 | Survey | 2014-02-04 → 2014-07-07 (+153d) |  |  |
| 45 | Layers 1-3 complete | 2014-04-15 → 2014-08-04 (+111d) | 98 → 42 |  |
| 46 | **Layers 4-6** | 2013-04-29 → 2013-01-07 (-112d) | 14 → none |  |
| 47 | **Modules** | 2013-04-29 → 2013-01-07 (-112d) |  |  |
| 48 | **Half Modules** | 2013-04-29 → 2013-01-07 (-112d) |  |  |
| 49 | **Supports** | 2013-04-29 → 2013-01-07 (-112d) |  |  |
| 50 | **Design** | 2013-08-19 → 2013-01-07 (-224d) |  |  |
| 51 | Carbon Fiber | 2013-04-29 → 2013-01-07 (-112d) |  |  |
| 52 | Kapton | 2013-04-29 → 2013-01-07 (-112d) |  |  |
| 53 | **Procurement** | 2013-11-11 → 2013-10-01 (-41d) | 4 → 4, 50 |  |
| 56 | Fabrication |  | 68 → 53 |  |
| 58 | Testing | 2013-11-26 → 2013-12-10 (+14d) | 17 → 57 |  |
| 59 | **Sensors** | 2013-04-29 → 2013-01-07 (-112d) |  |  |
| 60 | Procurement | 2013-04-29 → 2013-01-07 (-112d) |  |  |
| 61 | Testing | 2013-12-10 → 2013-02-04 (-309d) | 57 → 60 |  |
| 62 | **Integration** | 2013-08-19 → 2013-01-07 (-224d) |  |  |
| 63 | **Design** | 2013-04-29 → 2013-01-07 (-112d) |  |  |
| 64 | Half-module design | 2013-08-05 → 2013-01-07 (-210d) | 154FF, 52FF → 52FF |  |
| 65 | Support assembly fixture | 2013-09-30 → 2013-03-04 (-210d) |  |  |
| 66 | Half-module assembly fixture | 2013-09-30 → 2013-03-04 (-210d) |  |  |
| 67 | Wirebonding fixture | 2013-09-30 → 2013-03-04 (-210d) |  |  |
| 68 | **Procurement** | 2013-10-01 → 2013-03-18 (-197d) | 63, 4 → none |  |
| 69 | Support assembly fixture | 2013-10-14 → 2013-03-18 (-210d) |  |  |
| 70 | Half-module assembly fixture | 2013-10-28 → 2013-04-01 (-210d) |  |  |
| 71 | Wirebonding fixture | 2013-10-28 → 2013-04-01 (-210d) |  |  |
| 72 | **Fabrication** | 2013-12-09 → 2013-04-29 (-224d) |  |  |
| 73 | Small parts | 2013-12-09 → 2013-04-29 (-224d) | Hardware → 68 |  |
| 74 | **Assembly** | 2014-03-18 → 2013-10-01 (-168d) | Layers 1-3 Support plates complete → 4 |  |
| 75 | half-module assembly | 2013-12-09 → 2013-10-01 (-69d) | 92 → 72 |  |
| 76 | wirebonding | 2013-12-09 → 2013-10-01 (-69d) |  |  |
| 77 | **Testing** | 2014-04-01 → 2013-10-01 (-182d) |  |  |
| 78 | DAQ testing | 2013-12-09 → 2013-10-01 (-69d) |  |  |
| 79 | Layers 4-6 Half Modules Complete | 2014-01-18 → 2013-10-29 (-81d) | 96 → 77 |  |
| 80 | **Module supports** | 2013-08-26 → 2014-04-21 (+238d) |  |  |
| 81 | Design | 2013-08-26 → 2014-04-21 (+238d) | none → 14 | constraint start no earlier than 2013-08-26 → none |
| 82 | Procurement | 2013-10-21 → 2014-04-28 (+189d) |  |  |
| 83 | Fabrication | 2013-11-18 → 2014-05-05 (+168d) |  |  |
| 84 | Assembly | 2013-12-02 → 2014-05-19 (+168d) |  |  |
| 85 | Testing | 2013-05-27 → 2014-05-26 (+364d) | 60 → 84 |  |

| ID | Task | Start | Predecessors | Other |
| --- | --- | --- | --- | --- |
| 86 | **Integration** | 2013-08-05 → 2014-03-31 (+238d) |  |  |
| 87 | **Design** | 2013-08-05 → 2014-03-31 (+238d) |  |  |
| 88 | Module | 2013-10-21 → 2014-03-31 (+161d) | 81, 64FF → 81FF, 64FF |  |
| 89 | Module assembly fixture | 2013-12-02 → 2014-04-28 (+147d) | 88FF → 88 |  |
| 90 | **Procurement** | 2013-10-14 → 2014-05-12 (+210d) | none → 4 |  |
| 91 | Module assembly fixture | 2013-12-16 → 2014-05-12 (+147d) |  |  |
| 92 | **Fabrication** | 2013-11-25 → 2014-05-19 (+175d) |  |  |
| 93 | Module assembly fixture | 2014-01-13 → 2014-05-19 (+126d) |  |  |
| 94 | **Assembly** | 2013-12-09 → 2014-06-02 (+175d) | 158SS, 4 → none |  |
| 95 | Modules | 2014-01-20 → 2014-06-02 (+133d) |  |  |
| 96 | **Testing** | 2013-12-09 → 2014-06-02 (+175d) | none → 94SS |  |
| 97 | DAQ testing | 2014-01-20 → 2014-06-02 (+133d) |  |  |
| 98 | Survey | 2014-04-01 → 2014-06-16 (+76d) | Layer 1-3 assembly → 97 |  |
| 99 | Layers 4-6 Modules Complete | 2014-03-01 → 2014-06-28 (+119d) | 111 → 98 |  |
| 101 | **Design** | 2013-10-21 → 2014-04-28 (+189d) |  |  |
| 103 | **Procurement** | 2013-12-16 → 2014-05-12 (+147d) | 4 → 101, 4 |  |
| 105 | **Fabrication** | 2014-01-13 → 2014-06-09 (+147d) | none → 103 |  |
| 106 | Small parts | 2013-11-25 → 2014-06-09 (+196d) | 90 → none |  |
| 107 | **Assembly** | 2014-01-20 → 2014-06-30 (+161d) | none → 105 |  |
| 108 | Module mounting | 2014-03-03 → 2014-06-30 (+119d) |  |  |
| 109 | **Testing** | 2014-01-20 → 2014-07-14 (+175d) | 107SS → 107 |  |
| 110 | DAQ testing | 2014-03-17 → 2014-07-14 (+119d) |  |  |
| 111 | Survey | 2014-02-17 → 2014-07-14 (+147d) | 97 → none |  |
| 112 | Layers 4-6 complete | 2014-05-24 → 2014-07-26 (+63d) | Survey → 109 |  |
| 115 | Design | 2013-10-01 → 2014-05-12 (+223d) | Layers 1-3 designFF → 102, 35 |  |
| 116 | Procurement | 2013-11-26 → 2014-05-26 (+181d) | 115, 4 → 115 |  |
| 117 | Fabrication | 2013-12-24 → 2014-06-02 (+160d) |  |  |
| 119 | Design | 2014-01-17 → 2014-05-12 (+115d) | 123FF → 102, 35 |  |
| 120 | Procurement | 2014-03-14 → 2014-05-26 (+73d) |  |  |
| 121 | Fabrication | 2014-03-28 → 2014-06-02 (+66d) |  |  |
| 122 | **DAQ Support/Cooling** | 2014-01-17 → 2014-05-12 (+115d) |  |  |
| 123 | Design | 2014-01-17 → 2014-05-12 (+115d) | Layers 1-3 design, Layers 4-6 Design → 102, 35 |  |
| 124 | Procurement | 2014-03-14 → 2014-05-26 (+73d) | 123 → 4, 123 |  |
| 125 | Fabrication | 2014-03-28 → 2014-06-02 (+66d) |  |  |
| 126 | Assembly | 2014-01-21 → 2014-06-30 (+160d) | 117 → 117, 121, 125 |  |
| 127 | Testing | 2013-12-16 → 2014-07-14 (+210d) | 84 → 126 |  |
| 128 | Tracker Support Complete | 2014-06-20 → 2014-07-26 (+36d) | 149 → 127 |  |
| 129 | **Services** | 2013-10-28 → 2013-10-01 (-27d) |  |  |
| 130 | **Vacuum Flanges/Boards/cables** | 2014-01-01 → 2013-10-01 (-92d) |  |  |
| 131 | Design | 2013-10-28 → 2013-10-01 (-27d) | Layers 1-3 designFF → none |  |
| 132 | Procurement | 2013-11-11 → 2013-12-24 (+43d) |  |  |
| 133 | Fabrication | 2013-11-25 → 2014-03-18 (+113d) |  |  |
| 134 | Assembly | 2014-04-25 → 2014-05-20 (+25d) | 121 → 180, 188, 133 | constraint none → start no earlier than 2014-04-16 |
| 135 | Testing | 2014-02-04 → 2014-06-03 (+119d) | 126 → 134 |  |
| 136 | **Shipping** | 2014-04-21 → 2014-05-12 (+21d) |  |  |
| 137 | Design | 2014-01-01 → 2014-05-12 (+131d) | none → 102, 35 | constraint start no earlier than 2014-01-01 → start no earlier than 2014-04-28 |
| 138 | Procurement | 2014-03-14 → 2014-06-02 (+80d) | 137, 4 → 137 |  |
| 139 | Fabrication | 2014-04-07 → 2014-06-30 (+84d) |  | constraint start no earlier than 2014-04-07 → none |
| 140 | Assembly | 2014-04-25 → 2014-07-14 (+80d) | 125 → 139 |  |
| 141 | Testing | 2014-05-09 → 2014-07-21 (+73d) | 134 → 140 |  |
| 142 | Services complete | 2014-07-19 → 2014-07-26 (+7d) | Testing, Testing, Testing → 135, 141 |  |
| 143 | **Integration at SLAC** | 2014-06-20 → 2014-08-04 (+45d) | 5 → none |  |
| 144 | Assembly | 2013-12-09 → 2014-08-04 (+238d) | 133 → 171, 112, 45, 135, 128 |  |
| 145 | Testing | 2014-05-09 → 2014-08-18 (+101d) | 140 → 144 |  |
| 146 | SVT ready to ship | 2014-09-03 → 2014-09-15 (+12d) | Testing, 136, 142, 259 → 259, 142, 145 |  |
| 147 | **Integration at JLab** | 2014-09-03 → 2014-09-15 (+12d) |  |  |
| 148 | Assembly | 2014-05-20 → 2014-09-15 (+118d) | 139, 179, 187 → none |  |
| 149 | Testing | 2014-06-06 → 2014-09-29 (+115d) | Integration → 148 |  |
| 150 | Installation | 2014-10-15 → 2014-10-27 (+12d) | Testing → 149 |  |
| 151 | SVT project complete | 2014-10-22 → 2014-11-03 (+12d) |  |  |
| 166 | FE Board Functionality Complete |  |  | constraint start no earlier than 2014-04-17 → none |
| 167 | Layout 2nd spin |  |  | constraint start no earlier than 2014-04-17 → none |
| 168 | Procurement 2nd spin |  |  | constraint start no earlier than 2014-04-17 → none |
| 169 | Assembly |  |  | constraint start no earlier than 2014-04-17 → none |
| 170 | Production Testing |  |  | constraint start no earlier than 2014-04-17 → none |
| 176 | Testing |  | 223FF, 175 → 175 |  |
| 177 | Flange Boards Functionality Complete |  | 223, 176 → 176 | constraint start no earlier than 2014-04-17 → none |
| 178 | Procurement Production |  |  | constraint start no earlier than 2014-04-17 → none |
| 179 | Production Testing |  |  | constraint start no earlier than 2014-04-17 → none |
| 181 | **Power Flange Boards** |  |  | constraint start no earlier than 2013-11-25 → none |

| ID | Task | Start | Predecessors | Other |
| --- | --- | --- | --- | --- |
| 190 | **L1-L3 Aggregators** | 2014-02-03 → 2014-04-18 (+74d) |  | constraint none → start no earlier than 2014-04-18 |
| 191 | Design | 2014-02-03 → 2014-04-18 (+74d) | Support plate → none |  |
| 192 | Procurement | 2014-02-24 → 2014-05-09 (+74d) |  |  |
| 193 | Assembly | 2014-03-03 → 2014-05-16 (+74d) |  |  |
| 194 | Testing | 2014-03-10 → 2014-05-23 (+74d) |  |  |
| 195 | **L1-L3 FEB Cables** | 2014-02-03 → 2014-04-18 (+74d) |  | constraint none → start no earlier than 2014-04-18 |
| 196 | Design | 2014-02-03 → 2014-04-18 (+74d) | Support plate → none |  |
| 197 | Procurement | 2014-02-24 → 2014-05-09 (+74d) |  |  |
| 198 | Assembly | 2014-03-03 → 2014-05-16 (+74d) |  |  |
| 199 | Testing | 2014-03-10 → 2014-05-23 (+74d) |  |  |
| 200 | **L4-L6 Aggregators** | 2014-02-03 → 2014-04-18 (+74d) |  | constraint none → start no earlier than 2014-04-18 |
| 201 | Design | 2014-02-03 → 2014-04-18 (+74d) | Support plate → none |  |
| 202 | Procurement | 2014-02-24 → 2014-05-09 (+74d) |  |  |
| 203 | Assembly | 2014-03-03 → 2014-05-16 (+74d) |  |  |
| 204 | Testing | 2014-03-10 → 2014-05-23 (+74d) |  |  |
| 205 | **L4-L6 FEB Cables** | 2014-02-03 → 2014-04-18 (+74d) |  | constraint none → start no earlier than 2014-04-18 |
| 206 | Design | 2014-02-03 → 2014-04-18 (+74d) | Support plate → none |  |
| 207 | Procurement | 2014-02-24 → 2014-05-09 (+74d) |  |  |
| 208 | Assembly | 2014-03-03 → 2014-05-16 (+74d) |  |  |
| 209 | Testing | 2014-03-10 → 2014-05-23 (+74d) |  |  |
| 224 | Production Procurement | 2014-04-21 → 2014-04-24 (+3d) |  | constraint none → start no earlier than 2014-04-24 |
| 225 | Production Testing | 2014-04-28 → 2014-05-01 (+3d) |  |  |
| 229 | Assembly | 2014-04-28 → 2014-05-05 (+7d) | 227, 228SS, 228FF → 228 | constraint start no earlier than 2014-04-24 → none |
| 230 | Testing | 2014-05-21 → 2014-05-28 (+7d) |  |  |
| 236 | Cables Complete | 2014-05-24 → 2014-05-30 (+6d) | 190, 195, 200, 205, 210, 215, 220, 226, 231 → 190, 195, 200, 205, 210, 215, 220, 226, 231, 230, 235 |  |
| 244 | Testing |  | 243 → 243, 166 |  |
| 249 | Testing |  | 248 → 248, 177 |  |
| 252 | Procurement |  |  | constraint start no earlier than 2013-11-22 → none |
| 254 | Testing |  |  | constraint start no earlier than 2014-02-14 → none |
| 255 | **Integration** | 2014-07-09 → 2014-07-14 (+5d) | none → 171 |  |
| 256 | Assembly | 2014-07-09 → 2014-07-14 (+5d) | 5, 46, 130, 122, 189, 254 → 189, 236, 254 |  |
| 257 | EPICS GUI testing | 2014-07-23 → 2014-07-28 (+5d) |  |  |
| 258 | Testing | 2014-07-30 → 2014-08-04 (+5d) |  |  |
| 259 | SVT DAQ Complete | 2014-09-03 → 2014-09-06 (+3d) |  |  |

## Version 4 (saved 2014-04-22)

Note of the change: Updated flex cable schedule

Added:

| ID | Task | Start | Predecessors | Constraint |
| --- | --- | --- | --- | --- |
| 192 | Schematic | 2014-05-02 | 191 | start no earlier than 2014-04-22 |
| 193 | Layout | 2014-05-05 | 192 | start no earlier than 2014-04-22 |
| 199 | Schematic | 2014-05-02 | 198 |  |
| 200 | Layout | 2014-05-05 | 199 |  |
| 206 | Schematic | 2014-05-02 | 205 |  |
| 207 | Layout | 2014-05-05 | 206 |  |
| 213 | Schematic | 2014-05-02 | 212 |  |
| 214 | Layout | 2014-05-05 | 213 |  |

Changed:

| ID | Task | Start | Predecessors |
| --- | --- | --- | --- |
| 194 | Procurement | 2014-05-09 → 2014-05-19 (+10d) | 191 → 193 |
| 195 | Assembly | 2014-05-16 → 2014-05-26 (+10d) |  |
| 196 | Testing | 2014-05-23 → 2014-06-02 (+10d) |  |
| 201 | Procurement | 2014-05-09 → 2014-05-19 (+10d) | 198 → 200 |
| 202 | Assembly | 2014-05-16 → 2014-05-26 (+10d) |  |
| 203 | Testing | 2014-05-23 → 2014-06-02 (+10d) |  |
| 208 | Procurement | 2014-05-09 → 2014-05-19 (+10d) | 205 → 207 |
| 209 | Assembly | 2014-05-16 → 2014-05-26 (+10d) |  |
| 210 | Testing | 2014-05-23 → 2014-06-02 (+10d) |  |
| 215 | Procurement | 2014-05-09 → 2014-05-19 (+10d) | 212 → 214 |
| 216 | Assembly | 2014-05-16 → 2014-05-26 (+10d) |  |
| 217 | Testing | 2014-05-23 → 2014-06-02 (+10d) |  |
| 244 | Cables Complete | 2014-05-30 → 2014-06-07 (+8d) |  |

## Version 5 (saved 2014-04-30)

Note of the change: Adjusted cabling (except flex cables) to reflect the new shielding requirements. Adjusted FEB production testing time to 2w

Complete tasks 1 → 0.

Changed:

| ID | Task | Start | Complete | Predecessors | Other |
| --- | --- | --- | --- | --- | --- |
| 171 | FE Boards Complete | 2014-07-12 → 2014-07-19 (+7d) |  |  |  |
| 192 | Schematic |  |  |  | constraint start no earlier than 2014-04-22 → none |
| 193 | Layout |  |  |  | constraint start no earlier than 2014-04-22 → none |
| 221 | Assembly | 2014-04-28 → 2014-05-12 (+14d) |  |  | constraint start no earlier than 2014-04-28 → none |
| 222 | Testing | 2014-05-12 → 2014-05-26 (+14d) |  |  |  |
| 226 | Assembly | 2014-05-05 → 2014-05-12 (+7d) |  |  |  |
| 227 | Testing | 2014-05-19 → 2014-05-26 (+7d) |  |  |  |
| 232 | Production Procurement | 2014-04-24 → 2014-05-02 (+8d) |  |  | constraint start no earlier than 2014-04-24 → start no earlier than 2014-05-02 |
| 233 | Production Testing | 2014-05-01 → 2014-05-09 (+8d) |  |  |  |
| 236 | Procurement | 2014-02-03 → 2014-05-12 (+98d) | 100% → 0% | 235SS → 235 |  |
| 237 | Assembly | 2014-05-05 → 2014-05-23 (+18d) |  |  |  |
| 238 | Testing | 2014-05-28 → 2014-06-13 (+16d) |  |  |  |
| 244 | Cables Complete | 2014-06-07 → 2014-06-17 (+10d) |  |  |  |
| 263 | **Integration** | 2014-07-14 → 2014-07-09 (-5d) |  | 171 → none |  |
| 264 | Assembly | 2014-07-14 → 2014-07-09 (-5d) |  |  |  |
| 265 | EPICS GUI testing | 2014-07-28 → 2014-07-23 (-5d) |  |  | constraint start no earlier than 2014-04-17 → none |
| 266 | Testing | 2014-08-04 → 2014-07-30 (-5d) |  | 245, 264, 265 → 245, 264, 171, 265 |  |
| 267 | SVT DAQ Complete | 2014-09-06 → 2014-09-03 (-3d) |  |  |  |

## Version 6 (saved 2014-07-16)

Note of the change: Added updated FEB, flange board and cable schedule

Added:

| ID | Task | Start | Predecessors | Constraint |
| --- | --- | --- | --- | --- |
| 135 | Flange board assembly | 2014-07-25 | 185 |  |
| 136 | Power flange board assembly | 2014-07-28 | 197 |  |
| 180 | 2nd spin design | 2014-06-25 | 179 |  |
| 181 | 2nd spin layout | 2014-06-26 | 180 |  |
| 183 | Assembly | 2014-07-11 | 182 |  |
| 193 | 2nd spin design | 2014-06-30 | 192 |  |
| 194 | 2nd spin layout | 2014-07-02 | 193 |  |
| 195 | 2nd spin procurement | 2014-07-07 | 194 |  |
| 196 | Assembly | 2014-07-14 | 195 |  |
| 247 | Extra procurement HV wire | 2014-07-18 |  | start no earlier than 2014-07-18 |
| 248 | Assembly extra HV wire | 2014-08-15 | 247 |  |
| 269 | EPICS slow control | 2014-06-02 |  | start no earlier than 2014-06-02 |

Removed: 265 EPICS GUI testing

Changed:

| ID | Task | Start | Predecessors | Other |
| --- | --- | --- | --- | --- |
| 134 | **Assembly** | 2014-05-20 → 2014-07-25 (+66d) | 185, 197, 133 → 133 | constraint start no earlier than 2014-04-16 → none |
| 137 | Testing | 2014-06-03 → 2014-08-04 (+62d) | 134 → 135, 136 |  |
| 138 | **Shipping** | 2014-05-12 → 2014-07-18 (+67d) |  |  |
| 139 | Design | 2014-05-12 → 2014-07-18 (+67d) |  | constraint start no earlier than 2014-04-28 → start no earlier than 2014-07-18 |
| 140 | Procurement | 2014-06-02 → 2014-08-01 (+60d) |  |  |
| 141 | Fabrication | 2014-06-30 → 2014-08-29 (+60d) |  |  |
| 142 | Assembly | 2014-07-14 → 2014-09-12 (+60d) |  |  |
| 143 | Testing | 2014-07-21 → 2014-09-19 (+60d) |  |  |
| 144 | Services complete | 2014-07-26 → 2014-09-26 (+62d) |  |  |
| 145 | **Integration at SLAC** | 2014-08-04 → 2014-09-01 (+28d) |  |  |
| 146 | Assembly | 2014-08-04 → 2014-09-01 (+28d) |  |  |
| 147 | Testing | 2014-08-18 → 2014-09-15 (+28d) |  |  |
| 148 | SVT ready to ship | 2014-09-15 → 2014-10-11 (+26d) |  |  |
| 149 | **Integration at JLab** | 2014-09-15 → 2014-10-13 (+28d) |  |  |
| 150 | Assembly | 2014-09-15 → 2014-10-13 (+28d) |  |  |
| 151 | Testing | 2014-09-29 → 2014-10-27 (+28d) |  |  |
| 152 | Installation | 2014-10-27 → 2014-11-24 (+28d) |  |  |
| 153 | SVT project complete | 2014-11-03 → 2014-11-29 (+26d) |  |  |
| 168 | FE Board Functionality Complete | 2014-05-31 → 2014-07-26 (+56d) |  |  |
| 169 | Layout 2nd spin | 2014-06-02 → 2014-07-28 (+56d) |  |  |
| 170 | Procurement 2nd spin | 2014-06-16 → 2014-08-04 (+49d) |  |  |
| 171 | Assembly | 2014-06-25 → 2014-08-11 (+47d) |  |  |
| 172 | Production Testing | 2014-07-07 → 2014-08-25 (+49d) |  |  |
| 173 | FE Boards Complete | 2014-07-19 → 2014-08-30 (+42d) |  |  |
| 179 | Flange Boards Functionality Complete | 2014-05-03 → 2014-06-25 (+53d) |  | constraint none → start no earlier than 2014-06-16 |
| 182 | Procurement Production | 2014-05-05 → 2014-06-27 (+53d) | 179 → 181 |  |
| 184 | Production Testing | 2014-05-12 → 2014-07-18 (+67d) | 182 → 183 |  |
| 185 | Flange Boards Complete | 2014-05-17 → 2014-07-25 (+69d) |  |  |
| 190 | Procurement | 2014-05-05 → 2014-05-29 (+24d) |  |  |
| 191 | Assembly | 2014-05-12 → 2014-06-05 (+24d) |  |  |
| 192 | Testing | 2014-05-19 → 2014-06-26 (+38d) |  |  |
| 197 | Power Flange Boards Complete | 2014-05-20 → 2014-07-28 (+69d) | 192 → 196 |  |
| 246 | Assembly | 2014-05-23 → 2014-06-05 (+13d) |  |  |
| 249 | Testing | 2014-06-13 → 2014-08-18 (+66d) | 246 → 248 |  |
| 255 | Cables Complete | 2014-06-17 → 2014-08-20 (+64d) |  |  |
| 259 | DPM Firmware | 2014-05-02 → 2014-06-12 (+41d) |  | constraint none → start no earlier than 2014-06-12 |
| 260 | Software | 2014-05-16 → 2014-06-26 (+41d) |  |  |
| 261 | DTM Firmware | 2014-05-30 → 2014-07-10 (+41d) |  |  |
| 262 | ROC Software | 2014-06-13 → 2014-07-24 (+41d) |  |  |
| 263 | Testing | 2014-06-27 → 2014-08-07 (+41d) | 262, 168 → 262 |  |
| 267 | Assembly | 2014-05-05 → 2014-07-14 (+70d) |  |  |
| 268 | Testing | 2014-05-12 → 2014-07-21 (+70d) |  |  |
| 270 | RCE DAQ Complete | 2014-07-11 → 2014-08-21 (+41d) | 263, 268 → 263, 268, 269 |  |
| 274 | Testing | 2014-06-25 → 2014-07-23 (+28d) |  |  |
| 275 | **Integration** | 2014-07-09 → 2014-09-01 (+54d) |  |  |
| 276 | Assembly | 2014-07-09 → 2014-09-01 (+54d) | 198, 255, 274 → 173, 274, 246 |  |
| 277 | Testing | 2014-07-30 → 2014-09-01 (+33d) | 256, 276, 173, EPICS GUI testing → 173, 270 |  |
| 278 | SVT DAQ Complete | 2014-09-03 → 2014-10-04 (+31d) |  |  |
